# TRAINING ROLLOUT INITIATIVE

Schedule from MS Project, 2022-11-01 to 2023-05-10.

## Calendars

- Standard: Mon-Fri 08:00-12:00, 13:00-17:00; Sat-Sun off.

## Resources

| Resource | Group | Unit | Rate |
| --- | --- | --- | --- |
| GM-HR |  |  |  |
| Personnel Manager |  |  |  |
| Admin Manager |  |  |  |
| T&D Manager |  |  |  |
| QUALITY Manager |  |  |  |
| HR Staff 1 |  |  |  |
| HR Staff 2 |  |  |  |
| External Trainer |  |  |  |
| Microsoft Office Annual License | Software |  | 2000000 |
| Microsoft Project Professional Annual License | Software |  | 16000000 |
| Airfare Tickets (round trip) |  |  |  |
| Lodging |  |  |  |
| taxi |  |  |  |
| Per Diem Cost |  |  |  |
| Printer Ink Cartridges |  | HP box ink | 10000000 |

## Schedule

| ID | WBS | Task | Type | Duration | Start | Finish | Predecessors | Total slack | Free slack |
| --- | --- | --- | --- | --- | --- | --- | --- | --- | --- |
| 1 | 1 | **STAGE 1 - PLANNING** |  | 38d | 2022-11-01 | 2022-12-22 |  | 0d |  |
| 2 | 1.1 | **Identify Community To Be Trained** |  | 18d | 2022-11-01 | 2022-11-24 |  | 0d |  |
| 3 | 1.1.1 | Create list of target departments |  | 5d | 2022-11-01 | 2022-11-07 |  | 0d |  |
| 4 | 1.1.2 | Training needs analysis |  | 5d | 2022-11-08 | 2022-11-14 | 3 | 5d |  |
| 5 | 1.1.3 | Compile/present results |  | 10d | 2022-11-08 | 2022-11-21 | 3 | 0d |  |
| 6 | 1.1.4 | In-house or outsource decision |  | 3d | 2022-11-22 | 2022-11-24 | 4, 5 | 0d |  |
| 7 | 1.1.5 | Departments/End Users Identified | milestone | 0d | 2022-11-24 | 2022-11-24 | 5, 6 | 0d |  |
| 8 | 1.2 | **Perform End-User Skill Assessment** |  | 18d | 2022-11-25 | 2022-12-20 |  | 0d |  |
| 9 | 1.2.1 | Create training participants list |  | 5d | 2022-11-25 | 2022-12-01 | 7 | 0d |  |
| 10 | 1.2.2 | Send assessment forms |  | 5d | 2022-12-02 | 2022-12-08 | 9 | 0d |  |
| 11 | 1.2.3 | Collect/compile results |  | 5d | 2022-12-09 | 2022-12-15 | 10 | 0d |  |
| 12 | 1.2.4 | Initiate placement matrix |  | 3d | 2022-12-16 | 2022-12-20 | 11 | 0d |  |
| 13 | 1.2.5 | Skill Assessment Complete | milestone | 0d | 2022-12-20 | 2022-12-20 | 12 | 0d |  |
| 14 | 1.3 | **Obtain Vendor Commitment & Budget** |  | 20d | 2022-11-25 | 2022-12-22 |  | 0d |  |
| 15 | 1.3.1 | Review/customize training material |  | 7d | 2022-11-25 | 2022-12-05 | 7 | 6d | 0d |
| 16 | 1.3.2 | Obtain approval for PO's |  | 5d | 2022-12-06 | 2022-12-12 | 15 | 6d |  |
| 17 | 1.3.3 | Complete training budget |  | 2d | 2022-12-21 | 2022-12-22 | 11, 13, 16 | 0d |  |
| 18 | 1.4 | STAGE 1 - PLANNING COMPLETE | milestone | 0d | 2022-12-22 | 2022-12-22 | 17, 13 | 0d |  |
| 19 | 2 | **STAGE 2 - COMMENCEMENT** |  | 62d | 2022-12-23 | 2023-03-20 |  | 0d |  |
| 20 | 2.1 | **Prepare Schedule & Logistics** |  | 25d | 2022-12-23 | 2023-01-26 |  | 0d |  |
| 21 | 2.1.1 | Determine dates & locations |  | 8d | 2022-12-23 | 2023-01-03 | 18 | 0d |  |
| 22 | 2.1.2 | Reserve training rooms |  | 5d | 2022-12-23 | 2022-12-29 | 18 | 3d |  |
| 23 | 2.1.3 | Post outlines/schedule on internet |  | 2d | 2023-01-04 | 2023-01-05 | 22, 21 | 0d |  |
| 24 | 2.1.4 | Set-up help desk support |  | 5d | 2023-01-06 | 2023-01-12 | 23 | 0d |  |
| 25 | 2.1.5 | Order training materials |  | 10d | 2023-01-13 | 2023-01-26 | 24 | 0d |  |
| 26 | 2.1.6 | Logistics Arranged | milestone | 0d | 2023-01-26 | 2023-01-26 | 25 | 0d |  |

Notes:
- 1: Assumptions: / ·Software will be rolled out to participant's workstations during training. / ·HR and training management has given their approval and allocated the funds and budget for this project. / ·All necessary compliance and regulatory issues have been addressed.
- 4: It is important to identify training needs before trying to implement any training solutions. A training needs analysis (TNA) is a systematic exploration of the way things are and the way they should be; the TNA will effectively target your training and development efforts and will help ensure that training interventions are well focused.
- 6: The decision to outsource or not was delayed by 3 days because gathering input took longer than expected.
- 8: Optimal results begin with assessments of professional skills that identify gaps, and their causes that prevent an organization from achieving its highest goals.
- 10: The project team agreed to send out the assessment forms in 2 days instead of 5 days to bring the project back on track.
- 12: Use the matrix to place each user in the proper training session.
- 14: Can be skipped if instructors and training are done in-house.
- 19: Assumption: / Training is done in-house; if training is outsourced, a reference to vendor participation is made.

| ID | WBS | Task | Type | Duration | Start | Finish | Predecessors | Total slack |
| --- | --- | --- | --- | --- | --- | --- | --- | --- |
| 27 | 2.2 | **Marketing** |  | 8d | 2023-01-27 | 2023-02-07 |  | 0d |
| 28 | 2.2.1 | Order promotional material |  | 7d | 2023-01-27 | 2023-02-06 | 26 | 0d |
| 29 | 2.2.2 | E-mail invitation to participants |  | 1d | 2023-02-07 | 2023-02-07 | 28 | 66d |
| 30 | 2.3 | **Training Sessions Registrations** |  | 15d | 2023-02-07 | 2023-02-27 |  | 0d |
| 31 | 2.3.1 | Enroll participants |  | 10d | 2023-02-07 | 2023-02-20 | 28 | 0d |
| 32 | 2.3.2 | Send out confirmations/prework requirements |  | 5d | 2023-02-21 | 2023-02-27 | 31 | 0d |
| 33 | 2.3.3 | Registration Established | milestone | 0d | 2023-02-27 | 2023-02-27 | 32 | 0d |
| 34 | 2.4 | **Schedule Instructors** |  | 10d | 2023-02-28 | 2023-03-13 |  | 0d |
| 35 | 2.4.1 | In-house instructors |  | 5d | 2023-02-28 | 2023-03-06 | 26, 33 | 5d |
| 36 | 2.4.2 | Outsourced instructors |  | 10d | 2023-02-28 | 2023-03-13 | 26, 33 | 0d |
| 37 | 2.5 | **Courseware Evaluations** |  | 5d | 2023-03-14 | 2023-03-20 |  | 0d |
| 38 | 2.5.1 | Customize eval forms |  | 5d | 2023-03-14 | 2023-03-20 | 35, 36 | 37d |
| 39 | 2.5.2 | Develop feedback instructions |  | 5d | 2023-03-14 | 2023-03-20 | 35, 36 | 0d |
| 40 | 2.6 | STAGE 2 - END PROJECT COMMENCEMENT | milestone | 0d | 2023-03-20 | 2023-03-20 | 39 | 0d |
| 41 | 3 | **STAGE 3 - IMPLEMENTATION** |  | 25d | 2023-03-21 | 2023-04-24 |  | 0d |
| 42 | 3.1 | Orientation meetings - INDIA |  | 4d | 2023-03-21 | 2023-03-24 | 40 | 0d |
| 43 | 3.2 | Consolidation sessions |  | 1d | 2023-03-27 | 2023-03-27 | 42 | 0d |
| 44 | 3.3 | Orientation meetings - US |  | 5d | 2023-03-28 | 2023-04-03 | 43 | 0d |
| 45 | 3.4 | Conduct trainings |  | 10d | 2023-04-04 | 2023-04-17 | 44 | 0d |
| 46 | 3.5 | Feedback evaluations |  | 5d | 2023-04-18 | 2023-04-24 | 45 | 0d |
| 47 | 4 | **STAGE 4 - CONCLUSION** |  | 12d | 2023-04-25 | 2023-05-10 |  | 0d |
| 48 | 4.1 | Lessons learned session |  | 2d | 2023-04-25 | 2023-04-26 | 46 | 0d |
| 49 | 4.2 | Incorporate Feedback, revisions to training material |  | 10d | 2023-04-27 | 2023-05-10 | 48 | 0d |
| 50 | 4.3 | "Project Complete" Milestone | milestone | 0d | 2023-05-10 | 2023-05-10 | 49 | 0d |

Notes:
- 28: Promotional material can include custom notepads, pens, mouse pads, etc.
- 31: Enrollment and confirmations can be fully automated if done through corporate intranet.
- 39: This form is usually used to collect feedback from instructors on the quality of material, room setup, workstation performance, specific user issues, specific software issues and specific vendor issues (if applicable).
